# Cronograma Controle Financeiro Facilitado

How a schedule from MS Project changed from version to version. A marks actual dates.

## Version 1 (saved 2018-11-09)

Note of the change: Documentos do Projeto

| ID | WBS | Task | Duration | Start | Finish | Predecessors | Complete | Total float | Constraint |
| --- | --- | --- | --- | --- | --- | --- | --- | --- | --- |
| 1 | 1 | **Sistema de Gestão para Associação de Catadores** | 76.19d | 2018-11-01 08:00 A | 2019-02-15 09:30 |  | 22% |  |  |
| 2 | 1.1 | **Prospecção** | 6.56d | 2018-11-01 08:00 A | 2018-11-09 13:30 A |  | 100% |  |  |
| 3 | 1.1.1 | **Ptec** | 4.12d | 2018-11-01 08:00 A | 2018-11-07 09:00 A |  | 100% |  |  |
| 4 |  | Estudar Domínio de Aplicação | 1d | 2018-11-01 08:00 A | 2018-11-01 17:00 A |  | 100% |  |  |
| 5 |  | Reunião com o Fornecedor de Requisitos | 1d | 2018-11-02 08:00 A | 2018-11-02 17:00 A | 4 | 100% |  |  |
| 6 |  | Redigir PTEC | 1d | 2018-11-05 08:00 A | 2018-11-05 17:00 A | 5 | 100% |  |  |
| 7 |  | Revisar PTEC | 0.12d | 2018-11-06 08:00 A | 2018-11-06 09:00 A | 6 | 100% |  |  |
| 8 |  | Aprova PTEC | 1d | 2018-11-06 09:00 A | 2018-11-07 09:00 A | 7 | 100% |  |  |
| 9 | 1.1.2 | **Est. Prel. Tam** | 1.06d | 2018-11-07 09:00 A | 2018-11-08 09:30 A |  | 100% |  |  |
| 10 |  | Estimar Tamanho do Projeto | 0.06d | 2018-11-07 09:00 A | 2018-11-07 09:30 A | 8 | 100% |  |  |
| 11 |  | Revisar Estimativa de Tamanho do Projeto | 1d | 2018-11-07 09:30 A | 2018-11-08 09:30 A | 10 | 100% |  |  |
| 12 | 1.1.3 | **Est. Prel. Cronograma e Orçamentos** | 1.38d | 2018-11-08 09:30 A | 2018-11-09 13:30 A |  | 100% |  |  |
| 13 |  | Elaborar Cronograma e Orçamentos Preliminares | 1.25d | 2018-11-08 09:30 A | 2018-11-09 11:30 A | 11 | 100% |  |  |
| 14 |  | Revisão da Elaboração | 0.12d | 2018-11-09 11:30 A | 2018-11-09 13:30 A | 13 | 100% |  |  |
| 15 | 1.2 | **Análise** | 8.19d | 2018-11-09 13:30 A | 2018-11-21 15:00 A |  | 100% |  |  |
| 16 | 1.2.1 | **Documento de Requisitos** | 0.46d | 2018-11-09 13:30 A | 2018-11-12 08:12 A |  | 100% |  |  |
| 17 |  | Reunião com o Cliente | 0.03d | 2018-11-09 13:30 A | 2018-11-09 13:42 A | 14 | 100% |  |  |
| 18 |  | Elaborar DRE | 0.19d | 2018-11-09 13:42 A | 2018-11-09 15:12 A | 17 | 100% |  | start no earlier than 2018-11-09 08:00 |
| 19 |  | Revisar DRE | 0.12d | 2018-11-09 15:12 A | 2018-11-09 16:12 A | 18 | 100% |  |  |
| 20 |  | Submeter DRE para Aprovação | 0.12d | 2018-11-09 16:12 A | 2018-11-12 08:12 A | 19 | 100% |  |  |
| 21 | 1.2.2 | **MRB** | 0.75d | 2018-11-21 08:00 A | 2018-11-21 15:00 A |  | 100% |  |  |
| 22 |  | Elaborar MRB | 0.62d | 2018-11-21 08:00 A | 2018-11-21 14:00 A | 20 | 100% |  | start no earlier than 2018-11-21 08:00 |
| 23 |  | Revisar MRB | 0.12d | 2018-11-21 14:00 A | 2018-11-21 15:00 A | 22 | 100% |  |  |
| 24 | 1.3 | **Planejamento do Projeto** | 5.5d | 2018-11-26 08:00 A | 2018-12-03 12:00 A |  | 100% |  |  |
| 25 | 1.3.1 | **Diagrama de Classes** | 0.62d | 2018-11-26 08:00 A | 2018-11-26 14:00 A |  | 100% |  |  |
| 26 |  | Elaborar Diagrama de Classes | 0.25d | 2018-11-26 08:00 A | 2018-11-26 10:00 A | 23 | 100% |  | start no earlier than 2018-11-26 08:00 |
| 27 |  | Revisar Diagrama de Classes | 0.12d | 2018-11-26 10:00 A | 2018-11-26 11:00 A | 26 | 100% |  |  |
| 28 |  | Atualizar MRB | 0.25d | 2018-11-26 11:00 A | 2018-11-26 14:00 A | 27 | 100% |  |  |
| 29 | 1.3.2 | **Modelo Entidade de Relacionamento** | 1.5d | 2018-11-30 08:00 A | 2018-12-03 12:00 A |  | 100% |  |  |
| 30 |  | Elaborar MER | 0.5d | 2018-11-30 08:00 A | 2018-11-30 12:00 A | 28 | 100% |  | start no earlier than 2018-11-30 08:00 |
| 31 |  | Revisar MER | 1d | 2018-11-30 13:00 A | 2018-12-03 12:00 A | 30 | 100% |  |  |
| 32 | 1.4 | **Implementação** | 39.81d | 2018-12-03 13:00 A | 2019-01-28 10:30 |  | 2% | 13.88d |  |
| 33 | 1.4.1 | **[RFC01] Manter Associados** | 0.51d | 2018-12-03 13:00 A | 2018-12-04 08:06 A |  | 100% |  |  |
| 34 |  | [RFS01] Inserir Associado | 0.46d | 2018-12-03 13:00 A | 2018-12-03 16:42 A | 31 | 100% |  |  |
| 35 |  | [RFS02] Consultar Associado | 0.01d | 2018-12-03 16:42 A | 2018-12-03 16:48 A | 34 | 100% |  |  |
| 36 |  | [RFS03] Editar Associado | 0.01d | 2018-12-03 16:48 A | 2018-12-03 16:54 A | 35 | 100% |  |  |
| 37 |  | [RFS04] Excluir Associado | 0.03d | 2018-12-03 16:54 A | 2018-12-04 08:06 A | 36 | 100% |  |  |
| 38 |  | Teste RFC01 | 0.05d | 2018-12-04 08:06 A | 2018-12-04 08:30 A | 37 | 100% |  |  |
| 39 | 1.4.3 | **[RFC02] Manter Empresas** | 0.07d | 2018-12-04 08:30 A | 2018-12-04 09:06 A |  | 100% |  |  |
| 40 |  | [RFS05] Inserir Empresas | 0.03d | 2018-12-04 08:30 A | 2018-12-04 08:42 A | 38 | 100% |  |  |
| 41 |  | [RFS06] Consultar Empresa | 0.01d | 2018-12-04 08:42 A | 2018-12-04 08:48 A | 40 | 100% |  |  |
| 42 |  | [RFS07] Editar Empresa | 0.01d | 2018-12-04 08:48 A | 2018-12-04 08:54 A | 41 | 100% |  |  |
| 43 |  | [RFS08] Excluir Empresa | 0.03d | 2018-12-04 08:54 A | 2018-12-04 09:06 A | 42 | 100% |  |  |
| 44 |  | Teste RFC02 | 0.05d | 2018-12-04 09:06 A | 2018-12-04 09:30 A | 43 | 100% |  |  |
| 45 | 1.4.5 | **[RFC03]Manter Material** | 4d | 2018-12-04 09:30 | 2018-12-10 09:30 |  |  | 13.88d |  |
| 46 |  | [RFS09] Inserir Material | 1d | 2018-12-04 09:30 | 2018-12-05 09:30 | 44 |  | 13.88d |  |
| 47 |  | [RFS10] Consultar Material | 1d | 2018-12-05 09:30 | 2018-12-06 09:30 | 46 |  | 13.88d |  |
| 48 |  | [RFS11] Alterar Material | 1d | 2018-12-06 09:30 | 2018-12-07 09:30 | 47 |  | 13.88d |  |
| 49 |  | [RFS12] Excluir Material | 1d | 2018-12-07 09:30 | 2018-12-10 09:30 | 48 |  | 13.88d |  |
| 50 |  | Teste RFC03 | 1d | 2018-12-10 09:30 | 2018-12-11 09:30 | 49 |  | 13.88d |  |
| 51 | 1.4.7 | **[RFC04] Manter Compra de Material** | 4d | 2018-12-11 09:30 | 2018-12-17 09:30 |  |  | 13.88d |  |
| 52 |  | [RFS13] Inserir Compra | 1d | 2018-12-11 09:30 | 2018-12-12 09:30 | 50 |  | 13.88d |  |
| 53 |  | [RFS14] Consultar Compra | 1d | 2018-12-12 09:30 | 2018-12-13 09:30 | 52 |  | 13.88d |  |
| 54 |  | [RFS15] Editar Compra | 1d | 2018-12-13 09:30 | 2018-12-14 09:30 | 53 |  | 13.88d |  |
| 55 |  | [RFS16] Excluir Compra | 1d | 2018-12-14 09:30 | 2018-12-17 09:30 | 54 |  | 13.88d |  |
| 56 |  | Teste RFC04 | 1d | 2018-12-17 09:30 | 2018-12-18 09:30 | 55 |  | 13.88d |  |
| 57 | 1.4.9 | **[RFC05] Manter Venda de Material** | 4d | 2018-12-18 09:30 | 2018-12-24 09:30 |  |  | 13.88d |  |
| 58 |  | [RFS17] Inserir Venda | 1d | 2018-12-18 09:30 | 2018-12-19 09:30 | 56 |  | 13.88d |  |
| 59 |  | [RFS18] Consultar Venda | 1d | 2018-12-19 09:30 | 2018-12-20 09:30 | 58 |  | 13.88d |  |
| 60 |  | [RFS19] Editar Venda | 1d | 2018-12-20 09:30 | 2018-12-21 09:30 | 59 |  | 13.88d |  |
| 61 |  | [RFS20] Excluir Venda | 1d | 2018-12-21 09:30 | 2018-12-24 09:30 | 60 |  | 13.88d |  |
| 62 |  | Teste RFC05 | 1d | 2018-12-24 09:30 | 2018-12-25 09:30 | 61 |  | 13.88d |  |
| 63 | 1.4.11 | **[RFC06] Manter Despesas** | 4d | 2018-12-25 09:30 | 2018-12-31 09:30 |  |  | 13.88d |  |
| 64 |  | [RFS21] Inserir Despesa | 1d | 2018-12-25 09:30 | 2018-12-26 09:30 | 62 |  | 13.88d |  |
| 65 |  | [RFS22] Consultar Despesa | 1d | 2018-12-26 09:30 | 2018-12-27 09:30 | 64 |  | 13.88d |  |
| 66 |  | [RFS23] Editar Despesa | 1d | 2018-12-27 09:30 | 2018-12-28 09:30 | 65 |  | 13.88d |  |
| 67 |  | [RFS24] Excluir Despesa | 1d | 2018-12-28 09:30 | 2018-12-31 09:30 | 66 |  | 13.88d |  |
| 68 |  | Teste RFC06 | 1d | 2018-12-31 09:30 | 2019-01-01 09:30 | 67 |  | 13.88d |  |
| 69 | 1.4.13 | **[RFC07]Manter Receita** | 4d | 2019-01-01 09:30 | 2019-01-07 09:30 |  |  | 13.88d |  |
| 70 |  | [RFS25] Inserir Receita | 1d | 2019-01-01 09:30 | 2019-01-02 09:30 | 68 |  | 13.88d |  |

| ID | WBS | Task | Duration | Start | Finish | Predecessors | Complete | Total float |
| --- | --- | --- | --- | --- | --- | --- | --- | --- |
| 71 |  | [RFS26] Consultar Receita | 1d | 2019-01-02 09:30 | 2019-01-03 09:30 | 70 |  | 13.88d |
| 72 |  | [RFS27] Editar Receita | 1d | 2019-01-03 09:30 | 2019-01-04 09:30 | 71 |  | 13.88d |
| 73 |  | [RFS28] Excluir Receita | 1d | 2019-01-04 09:30 | 2019-01-07 09:30 | 72 |  | 13.88d |
| 74 |  | Teste RFC07 | 1d | 2019-01-07 09:30 | 2019-01-08 09:30 | 73 |  | 13.88d |
| 75 | 1.4.15 | **[RFC08] Manter Usuários** | 4d | 2019-01-08 09:30 | 2019-01-14 09:30 |  |  | 13.88d |
| 76 |  | [RFS29] Inserir Usuário | 1d | 2019-01-08 09:30 | 2019-01-09 09:30 | 74 |  | 13.88d |
| 77 |  | [RFS30] Consultar Usuário | 1d | 2019-01-09 09:30 | 2019-01-10 09:30 | 76 |  | 13.88d |
| 78 |  | [RFS31] Alterar Usuário | 1d | 2019-01-10 09:30 | 2019-01-11 09:30 | 77 |  | 13.88d |
| 79 |  | [RFS32] Excluir Usuário | 1d | 2019-01-11 09:30 | 2019-01-14 09:30 | 78 |  | 13.88d |
| 80 |  | Teste RFC08 | 1d | 2019-01-14 09:30 | 2019-01-15 09:30 | 79 |  | 13.88d |
| 81 | 1.4.17 | **[RFS33] Emitir Relatório Bolsa Catador** | 2d | 2019-01-15 09:30 | 2019-01-17 09:30 |  |  | 13.88d |
| 82 |  | [RFS33]Emitir Relatório Bolsa Catador | 1d | 2019-01-15 09:30 | 2019-01-16 09:30 | 80 |  | 13.88d |
| 83 |  | Teste RFS33 | 1d | 2019-01-16 09:30 | 2019-01-17 09:30 | 82 |  | 13.88d |
| 84 | 1.4.18 | **[RFS34] Emitir Relatório de Estoque** | 2d | 2019-01-17 09:30 | 2019-01-21 09:30 |  |  | 13.88d |
| 85 |  | [RFS34]Emitir Relatório de Estoque | 1d | 2019-01-17 09:30 | 2019-01-18 09:30 | 83 |  | 13.88d |
| 86 |  | Teste RFS34 | 1d | 2019-01-18 09:30 | 2019-01-21 09:30 | 85 |  | 13.88d |
| 87 | 1.4.19 | **[RNF01] Backup Periódico** | 2d | 2019-01-21 09:30 | 2019-01-23 09:30 |  |  | 13.88d |
| 88 |  | [RNF01] Backup Periódico | 1d | 2019-01-21 09:30 | 2019-01-22 09:30 | 86 |  | 13.88d |
| 89 |  | Teste RNF01 | 1d | 2019-01-22 09:30 | 2019-01-23 09:30 | 88 |  | 13.88d |
| 90 | 1.4.20 | **[RNF02] Interface Facilitada** | 1.12d | 2019-01-23 09:30 | 2019-01-24 10:30 |  |  | 13.88d |
| 91 |  | [RNF02] Interface Facilitada | 1d | 2019-01-23 09:30 | 2019-01-24 09:30 | 89 |  | 13.88d |
| 92 |  | Teste RNF02 | 0.12d | 2019-01-24 09:30 | 2019-01-24 10:30 | 91 |  | 13.88d |
| 93 | 1.4.21 | **[RNF03] Otimização de Desempenho** | 2d | 2019-01-24 10:30 | 2019-01-28 10:30 |  |  | 13.88d |
| 94 |  | [RNF03] Otimização de Desempenho | 1d | 2019-01-24 10:30 | 2019-01-25 10:30 | 92 |  | 13.88d |
| 95 |  | Teste RNF03 | 1d | 2019-01-25 10:30 | 2019-01-28 10:30 | 94 |  | 13.88d |
| 96 | 1.5 | **Monitoramento e Controle** | 72d | 2018-11-07 08:00 A | 2019-02-14 17:00 |  | 33% |  |
| 97 |  | Acompanhar Projeto | 1d | 2018-12-03 13:00 A | 2018-12-04 12:00 A | 31 | 100% |  |
| 98 | 1.5.2 | **Gerência de Configuração** | 2d | 2018-11-07 08:00 | 2018-11-08 17:00 |  |  | 70.19d |
| 99 |  | Elaborar Branch | 1d | 2018-11-07 08:00 | 2018-11-07 17:00 |  |  | 70.19d |
| 100 |  | Realizar Merge da Branch para a Trunk | 1d | 2018-11-08 08:00 | 2018-11-08 17:00 | 99 |  | 70.19d |

## Version 2 (saved 2018-11-23)

Note of the change: Atualização de Documentos

Last finish stays 2019-02-15. Complete tasks 31 → 37.

Changed:

| ID | Task | Start | Finish | Complete | Total float |
| --- | --- | --- | --- | --- | --- |
| 1 | **Sistema de Gestão para Associação de Catadores** |  |  | 22% → 35% |  |
| 32 | **Implementação** |  |  | 2% → 19% |  |
| 45 | **[RFC03]Manter Material** | 2018-12-04 09:30 A | 2018-12-10 09:30 A | 0% → 100% | 13.88d → none |
| 46 | [RFS09] Inserir Material | 2018-12-04 09:30 A | 2018-12-05 09:30 A | 0% → 100% | 13.88d → none |
| 47 | [RFS10] Consultar Material | 2018-12-05 09:30 A | 2018-12-06 09:30 A | 0% → 100% | 13.88d → none |
| 48 | [RFS11] Alterar Material | 2018-12-06 09:30 A | 2018-12-07 09:30 A | 0% → 100% | 13.88d → none |
| 49 | [RFS12] Excluir Material | 2018-12-07 09:30 A | 2018-12-10 09:30 A | 0% → 100% | 13.88d → none |
| 51 | **[RFC04] Manter Compra de Material** | 2018-12-11 09:30 A |  | 0% → 35% | 13.88d → 43d |
| 52 | [RFS13] Inserir Compra | 2018-12-11 09:30 A | 2018-12-12 09:30 A | 0% → 100% | 13.88d → none |
| 53 | [RFS14] Consultar Compra | 2018-12-12 09:30 A |  | 0% → 40% | 13.88d → 43d |
| 57 | **[RFC05] Manter Venda de Material** | 2018-12-18 09:30 A |  | 0% → 35% |  |
| 58 | [RFS17] Inserir Venda | 2018-12-18 09:30 A | 2018-12-19 09:30 A | 0% → 100% | 13.88d → none |
| 59 | [RFS18] Consultar Venda | 2018-12-19 09:30 A |  | 0% → 40% |  |

## Version 3 (saved 2018-11-29)

Note of the change: Atualização de Cronograma

Last finish stays 2019-02-15. Complete tasks 37 → 51.

Changed:

| ID | Task | Start | Finish | Complete | Total float | Other |
| --- | --- | --- | --- | --- | --- | --- |
| 1 | **Sistema de Gestão para Associação de Catadores** |  |  | 35% → 60% |  |  |
| 32 | **Implementação** |  |  | 19% → 52% |  |  |
| 50 | Teste RFC03 | 2018-12-10 09:30 A | 2018-12-11 09:30 A | 0% → 100% | 13.88d → none |  |
| 51 | **[RFC04] Manter Despesas** |  | 2018-12-17 09:30 A | 35% → 100% | 43d → none | was named [RFC04] Manter Compra de Material |
| 52 | [RFS13] Inserir Despesa |  |  |  |  | was named [RFS13] Inserir Compra |
| 53 | [RFS14] Consultar Despesa |  | 2018-12-13 09:30 A | 40% → 100% | 43d → none | was named [RFS14] Consultar Compra |
| 54 | [RFS15] Editar Despesa | 2018-12-13 09:30 A | 2018-12-14 09:30 A | 0% → 100% | 43d → none | was named [RFS15] Editar Compra |
| 55 | [RFS16] Excluir Despesa | 2018-12-14 09:30 A | 2018-12-17 09:30 A | 0% → 100% | 43d → none | was named [RFS16] Excluir Compra |
| 56 | Teste RFC04 | 2018-12-17 09:30 A | 2018-12-18 09:30 A | 0% → 100% | 13.88d → none |  |
| 57 | **[RFC05] Manter Venda de Material** |  | 2018-12-24 09:30 A | 35% → 100% | 13.88d → none |  |
| 59 | [RFS18] Consultar Venda |  | 2018-12-20 09:30 A | 40% → 100% | 13.88d → none |  |
| 60 | [RFS19] Editar Venda | 2018-12-20 09:30 A | 2018-12-21 09:30 A | 0% → 100% | 13.88d → none |  |
| 61 | [RFS20] Excluir Venda | 2018-12-21 09:30 A | 2018-12-24 09:30 A | 0% → 100% | 13.88d → none |  |
| 62 | Teste RFC05 | 2018-12-24 09:30 A | 2018-12-25 09:30 A | 0% → 100% | 13.88d → none |  |
| 63 | **[RFC06] Manter Compra de Material** | 2018-12-25 09:30 A | 2018-12-31 09:30 A | 0% → 100% | 13.88d → none | was named [RFC06] Manter Despesas |
| 64 | [RFS21] Inserir Compra | 2018-12-25 09:30 A | 2018-12-26 09:30 A | 0% → 100% | 13.88d → none | was named [RFS21] Inserir Despesa |
| 65 | [RFS22] Consultar Compra | 2018-12-26 09:30 A | 2018-12-27 09:30 A | 0% → 100% | 13.88d → none | was named [RFS22] Consultar Despesa |
| 66 | [RFS23] Editar Compra | 2018-12-27 09:30 A | 2018-12-28 09:30 A | 0% → 100% | 13.88d → none | was named [RFS23] Editar Despesa |
| 67 | [RFS24] Excluir Compra | 2018-12-28 09:30 A | 2018-12-31 09:30 A | 0% → 100% | 13.88d → none | was named [RFS24] Excluir Despesa |
| 68 | Teste RFC06 | 2018-12-31 09:30 A | 2019-01-01 09:30 A | 0% → 100% | 13.88d → none |  |

## Version 4 (saved 2018-11-29)

Note of the change: Atualização de Cronograma II

Last finish stays 2019-02-15.

Changed:

| ID | Task | Other |
| --- | --- | --- |
| 51 | **[RFC04] Manter Compra de Material** | was named [RFC04] Manter Despesas |
| 52 | [RFS13] Inserir Compra | was named [RFS13] Inserir Despesa |
| 53 | [RFS14] Consultar Compra | was named [RFS14] Consultar Despesa |
| 54 | [RFS15] Editar Compra | was named [RFS15] Editar Despesa |
| 55 | [RFS16] Excluir Compra | was named [RFS16] Excluir Despesa |
| 63 | **[RFC06] Manter Despesas** | was named [RFC06] Manter Compra de Material |
| 64 | [RFS21] Inserir Despesa | was named [RFS21] Inserir Compra |
| 65 | [RFS22] Consultar Despesa | was named [RFS22] Consultar Compra |
| 66 | [RFS23] Editar Despesa | was named [RFS23] Editar Compra |
| 67 | [RFS24] Excluir Despesa | was named [RFS24] Excluir Compra |
